# Costos

Schedule from MS Project, 2023-03-20 to 2023-08-18, costs in S.

## Calendars

- Estándar: Mon-Fri 09:00-13:00, 15:00-19:00; Sat-Sun off.

## Resources

| Resource | Group | Rate |
| --- | --- | --- |
| Servidor | Hardware | 2000 |
| Computadora | Hardware | 3500 |
| Product Manager | Manager | 37.5 |
| Product Owner | Manager | 31.2 |
| Scrum Master | Manager | 28.1 |
| Desarrollador 1 | Scrum Team | 21.8 |
| Desarrollador 2 | Scrum Team | 21.8 |
| Analista de calidad | Scrum Team | 21.8 |
| Cluster | Service | 2000 |
| Licencia Office | Software | 700 |
| Licencia Windows | Software | 100 |
| Licencia Adobe | Software | 110 |
| Licencia VS Enterprise | Software | 600 |

## Schedule

| ID | WBS | Task | Type | Duration | Start | Finish | Predecessors | Total slack | Free slack | Resources | Work | Cost |
| --- | --- | --- | --- | --- | --- | --- | --- | --- | --- | --- | --- | --- |
| 1 | 1 | **Asimov** |  | 110d | 2023-03-20 09:00 | 2023-08-18 19:00 |  | 0d |  |  | 1528h | 35,256.8 |
| 2 | 1.1 | **Inicio** |  | 1.5d | 2023-03-20 09:00 | 2023-03-21 13:00 |  | 0d |  |  | 32h | 1,036.8 |
| 3 | 1.1.1 | **Desarrollo Project Charter** |  | 1.5d | 2023-03-20 09:00 | 2023-03-21 13:00 |  | 0d |  |  | 32h | 1,036.8 |
| 4 | 1.1.1.1 | Identificar necesidades y requerimientos |  | 8h | 2023-03-20 09:00 | 2023-03-20 19:00 |  | 0.5d |  | Scrum Master | 8h | 224.8 |
| 5 | 1.1.1.2 | Identificar indicadores de éxito y alcance |  | 4h | 2023-03-20 09:00 | 2023-03-20 13:00 |  | 1d |  | Product Manager | 4h | 150 |
| 6 | 1.1.1.3 | Identificar restricciones e impacto |  | 4h | 2023-03-20 09:00 | 2023-03-20 13:00 |  | 0d |  | Product Owner | 4h | 124.8 |
| 7 | 1.1.1.4 | **Organizar equipo, stakeholders y recursos** |  | 1d | 2023-03-20 15:00 | 2023-03-21 13:00 | 6 | 0d |  |  | 8h | 237.2 |
| 8 | 1.1.1.4.1 | Identificación de stakeholders |  | 4h | 2023-03-20 15:00 | 2023-03-20 19:00 |  | 0d |  | Product Owner | 4h | 124.8 |
| 9 | 1.1.1.4.2 | Asignación de roles en equipo |  | 4h | 2023-03-21 09:00 | 2023-03-21 13:00 | 8FF | 0d |  | Scrum Master | 4h | 112.4 |
| 10 | 1.1.1.5 | Definir fases e hitos del proyecto |  | 8h | 2023-03-20 15:00 | 2023-03-21 13:00 | 7SS | 0d |  | Product Manager | 8h | 300 |
| 11 | 1.1.2 | Aprobación del proyecto | milestone | 0h | 2023-03-21 13:00 | 2023-03-21 13:00 | 3 | 0d |  | Product Owner |  |  |
| 12 | 1.2 | **Planificación** |  | 18.5d | 2023-03-21 15:00 | 2023-04-14 19:00 | 2 | 0d |  |  | 156h | 4,706.4 |
| 13 | 1.2.1 | **Gestión del alcance** |  | 1d | 2023-03-21 15:00 | 2023-03-22 13:00 |  | 0d |  |  | 8h | 300 |
| 14 | 1.2.1.1 | Elaborar estructura jerarquica WBS |  | 4h | 2023-03-21 15:00 | 2023-03-21 19:00 |  | 0d |  | Product Manager | 4h | 150 |
| 15 | 1.2.1.2 | Realizar descripción de fases |  | 4h | 2023-03-22 09:00 | 2023-03-22 13:00 | 14 | 0d |  | Product Manager | 4h | 150 |
| 16 | 1.2.2 | **Gestión de requerimientos** |  | 3d | 2023-03-22 15:00 | 2023-03-27 13:00 | 13 | 0d |  |  | 24h | 711.6 |
| 17 | 1.2.2.1 | Recolectar requerimientos |  | 8h | 2023-03-22 15:00 | 2023-03-23 13:00 |  | 0d |  | Scrum Master | 8h | 224.8 |
| 18 | 1.2.2.2 | Analizar requerimientos |  | 4h | 2023-03-23 15:00 | 2023-03-23 19:00 | 17 | 0d |  | Product Owner | 4h | 124.8 |
| 19 | 1.2.2.3 | Categorizar y describir requerimientos |  | 4h | 2023-03-24 09:00 | 2023-03-24 13:00 | 18 | 0d |  | Scrum Master | 4h | 112.4 |
| 20 | 1.2.2.4 | Elaborar matriz de trazabilidad |  | 8h | 2023-03-24 15:00 | 2023-03-27 13:00 | 19 | 0d |  | Product Owner | 8h | 249.6 |
| 21 | 1.2.3 | **Gestión de costos** |  | 4d | 2023-03-27 15:00 | 2023-03-31 13:00 | 16 | 0d |  |  | 40h | 1,311.2 |
| 22 | 1.2.3.1 | **Identificación de costos unitarios asociados al proyecto** |  | 4d | 2023-03-27 15:00 | 2023-03-31 13:00 |  | 0d |  |  | 32h | 1,048.8 |
| 23 | 1.2.3.1.1 | Costos de personal |  | 8h | 2023-03-27 15:00 | 2023-03-28 13:00 |  | 0d |  | Product Manager | 8h | 300 |
| 24 | 1.2.3.1.2 | Costos de infraestructura |  | 8h | 2023-03-28 15:00 | 2023-03-29 13:00 | 23 | 0d |  | Product Owner | 8h | 249.6 |
| 25 | 1.2.3.1.3 | Costos de software y hardware |  | 8h | 2023-03-29 15:00 | 2023-03-30 13:00 | 24 | 0d |  | Product Owner | 8h | 249.6 |
| 26 | 1.2.3.1.4 | Costos de servicios tercerizados |  | 8h | 2023-03-30 15:00 | 2023-03-31 13:00 | 25 | 0d |  | Product Owner | 8h | 249.6 |
| 27 | 1.2.3.2 | Costos por tarea |  | 4h | 2023-03-27 15:00 | 2023-03-27 19:00 |  | 3d | 0d | Scrum Master | 4h | 112.4 |
| 28 | 1.2.3.3 | Reservas para contingencias |  | 4h | 2023-03-28 09:00 | 2023-03-28 13:00 | 27 | 3d |  | Product Manager | 4h | 150 |

| ID | WBS | Task | Duration | Start | Finish | Predecessors | Total slack | Free slack | Resources | Work | Cost |
| --- | --- | --- | --- | --- | --- | --- | --- | --- | --- | --- | --- |
| 29 | 1.2.4 | **Gestión de recursos** | 3.5d | 2023-03-31 15:00 | 2023-04-05 19:00 | 21 | 0d |  |  | 28h | 924.4 |
| 30 | 1.2.4.1 | **Plan de gestión de recursos humanos** | 2d | 2023-03-31 15:00 | 2023-04-04 13:00 |  | 0d |  |  | 16h | 499.6 |
| 31 | 1.2.4.1.1 | Definir organigrama del proyecto | 4h | 2023-03-31 15:00 | 2023-03-31 19:00 |  | 0d |  | Product Manager | 4h | 150 |
| 32 | 1.2.4.1.2 | Describir roles del equipo del proyecto | 4h | 2023-04-03 09:00 | 2023-04-03 13:00 | 31 | 0d |  | Product Owner | 4h | 124.8 |
| 33 | 1.2.4.1.3 | Establecer requerimientos de personal de proyecto | 4h | 2023-04-03 15:00 | 2023-04-03 19:00 | 32 | 0d |  | Scrum Master | 4h | 112.4 |
| 34 | 1.2.4.1.4 | Definir tareas a cargo | 4h | 2023-04-04 09:00 | 2023-04-04 13:00 | 33 | 0d |  | Scrum Master | 4h | 112.4 |
| 35 | 1.2.4.2 | **Estructura de desgloce de recursos** | 1.5d | 2023-04-04 15:00 | 2023-04-05 19:00 | 30 | 0d |  |  | 12h | 424.8 |
| 36 | 1.2.4.2.1 | Definir organigrama de recursos | 4h | 2023-04-04 15:00 | 2023-04-04 19:00 |  | 0d |  | Product Owner | 4h | 124.8 |
| 37 | 1.2.4.2.2 | Definir criterios de contratación y costo unitario | 8h | 2023-04-05 09:00 | 2023-04-05 19:00 | 36 | 0d |  | Product Manager | 8h | 300 |
| 38 | 1.2.5 | **Gestión del cronograma** | 2d | 2023-04-06 09:00 | 2023-04-07 19:00 | 29 | 0d |  |  | 16h | 512 |
| 39 | 1.2.5.1 | **Cronograma del proyecto** | 2d | 2023-04-06 09:00 | 2023-04-07 19:00 |  | 0d |  |  | 16h | 512 |
| 40 | 1.2.5.1.1 | Agregar fases, subfases y actividades del proyecto | 4h | 2023-04-06 09:00 | 2023-04-06 13:00 |  | 0d |  | Product Owner | 4h | 124.8 |
| 41 | 1.2.5.1.2 | Agregar hitos del proyecto | 4h | 2023-04-06 15:00 | 2023-04-06 19:00 | 40 | 0d |  | Scrum Master | 4h | 112.4 |
| 42 | 1.2.5.1.3 | Vincular fases, subfases e hitos | 4h | 2023-04-07 09:00 | 2023-04-07 13:00 | 41 | 0d |  | Product Owner | 4h | 124.8 |
| 43 | 1.2.5.1.4 | Agregar recursos y costos | 4h | 2023-04-07 15:00 | 2023-04-07 19:00 | 42 | 0d |  | Product Manager | 4h | 150 |
| 44 | 1.2.6 | **Gestión de riesgos** | 2.5d | 2023-04-10 09:00 | 2023-04-12 13:00 | 38 | 0d |  |  | 20h | 511.2 |
| 45 | 1.2.6.1 | Establecer priorización de riesgos | 8h | 2023-04-10 09:00 | 2023-04-10 19:00 |  | 0d |  | Product Owner | 8h | 249.6 |
| 46 | 1.2.6.2 | Documentar plan de gestión de riesgo | 4h | 2023-04-11 09:00 | 2023-04-11 13:00 | 45 | 0d |  | Analista de calidad | 4h | 87.2 |
| 47 | 1.2.6.3 | Identificar plan de soluciones | 8h | 2023-04-11 15:00 | 2023-04-12 13:00 | 46 | 0d |  | Analista de calidad | 8h | 174.4 |
| 48 | 1.2.7 | **Gestión de calidad** | 2.5d | 2023-04-12 15:00 | 2023-04-14 19:00 | 44 | 0d |  |  | 20h | 436 |
| 49 | 1.2.7.1 | Definir requisitos y estándares de calidad | 8h | 2023-04-12 15:00 | 2023-04-13 13:00 |  | 0d |  | Analista de calidad | 8h | 174.4 |
| 50 | 1.2.7.2 | Identificar métricas de medición de calidad | 8h | 2023-04-13 15:00 | 2023-04-14 13:00 | 49 | 0d |  | Analista de calidad | 8h | 174.4 |
| 51 | 1.2.7.3 | Documentar plan de gestión de calidad | 4h | 2023-04-14 15:00 | 2023-04-14 19:00 | 50 | 0d |  | Analista de calidad | 4h | 87.2 |
| 52 | 1.3 | **Ejecución** | 60d | 2023-04-17 09:00 | 2023-07-07 19:00 | 12 | 0d |  |  | 1340h | 29,513.6 |
| 53 | 1.3.1 | **Diseño** | 13d | 2023-04-17 09:00 | 2023-05-03 19:00 |  | 47d |  |  | 104h | 2,568.8 |
| 54 | 1.3.1.1 | **Diseño de arquitectura** | 5d | 2023-04-17 09:00 | 2023-04-21 19:00 |  | 47d | 0d |  | 40h | 1,173.6 |
| 55 | 1.3.1.1.1 | Determinación de atributos de calidad | 8h | 2023-04-17 09:00 | 2023-04-17 19:00 |  | 47d | 0d | Scrum Master | 8h | 224.8 |
| 56 | 1.3.1.1.2 | Delimitación de contextos del sistema | 8h | 2023-04-18 09:00 | 2023-04-18 19:00 | 55 | 47d | 0d | Scrum Master | 8h | 224.8 |
| 57 | 1.3.1.1.3 | Identificar entorno de desarrollo | 4h | 2023-04-19 09:00 | 2023-04-19 13:00 | 56 | 47d | 0d | Scrum Master | 4h | 112.4 |
| 58 | 1.3.1.1.4 | Identificar entorno de producción | 4h | 2023-04-19 15:00 | 2023-04-19 19:00 | 57 | 47d | 0d | Scrum Master | 4h | 112.4 |
| 59 | 1.3.1.1.5 | Aprobación de arquitectura del sistema | 16h | 2023-04-20 09:00 | 2023-04-21 19:00 | 58 | 47d |  | Product Owner | 16h | 499.2 |

| ID | WBS | Task | Duration | Start | Finish | Predecessors | Total slack | Free slack | Resources | Work | Cost |
| --- | --- | --- | --- | --- | --- | --- | --- | --- | --- | --- | --- |
| 60 | 1.3.1.2 | **Diseño del software** | 8d | 2023-04-24 09:00 | 2023-05-03 19:00 | 54 | 47d |  |  | 64h | 1,395.2 |
| 61 | 1.3.1.2.1 | Elaboración de wireframes | 32h | 2023-04-24 09:00 | 2023-04-27 19:00 |  | 47d | 0d | Desarrollador 1 | 32h | 697.6 |
| 62 | 1.3.1.2.2 | Elaboración de mockups | 32h | 2023-04-28 09:00 | 2023-05-03 19:00 | 61 | 47d |  | Desarrollador 2 | 32h | 697.6 |
| 63 | 1.3.2 | **Configuración de proyecto** | 4.5d | 2023-04-17 09:00 | 2023-04-21 13:00 |  | 48d | 0d |  | 36h | 784.8 |
| 64 | 1.3.2.1 | Configuración del ambiente de desarrollo | 16h | 2023-04-17 09:00 | 2023-04-18 19:00 |  | 48d | 0d | Desarrollador 1 | 16h | 348.8 |
| 65 | 1.3.2.2 | Creación del proyecto base | 16h | 2023-04-19 09:00 | 2023-04-20 19:00 | 64 | 48d | 0d | Desarrollador 2 | 16h | 348.8 |
| 66 | 1.3.2.3 | Creación de repositorio del proyecto | 4h | 2023-04-21 09:00 | 2023-04-21 13:00 | 65 | 48d |  | Desarrollador 1 | 4h | 87.2 |
| 67 | 1.3.3 | **Desarrollo** | 60d | 2023-04-17 09:00 | 2023-07-07 19:00 |  | 0d |  |  | 960h | 20,928 |
| 68 | 1.3.3.1 | Sprint 1 | 120h | 2023-04-17 09:00 | 2023-05-05 19:00 |  | 0d |  | Desarrollador 1; Desarrollador 2 | 240h | 5,232 |
| 69 | 1.3.3.2 | Sprint 2 | 120h | 2023-05-08 09:00 | 2023-05-26 19:00 | 68 | 0d |  | Desarrollador 1; Desarrollador 2 | 240h | 5,232 |
| 70 | 1.3.3.3 | Sprint 3 | 120h | 2023-05-29 09:00 | 2023-06-16 19:00 | 69 | 0d |  | Desarrollador 1; Desarrollador 2 | 240h | 5,232 |
| 71 | 1.3.3.4 | Sprint 4 | 120h | 2023-06-19 09:00 | 2023-07-07 19:00 | 70 | 0d |  | Desarrollador 1; Desarrollador 2 | 240h | 5,232 |
| 72 | 1.3.4 | **Pruebas** | 7.5d | 2023-04-21 15:00 | 2023-05-02 19:00 | 63 | 48d |  |  | 240h | 5,232 |
| 73 | 1.3.4.1 | **Plan de pruebas unitarias** | 7.5d | 2023-04-21 15:00 | 2023-05-02 19:00 |  | 48d |  |  | 240h | 5,232 |
| 74 | 1.3.4.1.1 | Pruebas de funciones individuales | 60h | 2023-04-21 15:00 | 2023-05-02 19:00 | 63 | 48d |  | Analista de calidad | 60h | 1,308 |
| 75 | 1.3.4.1.2 | Pruebas de componentes individuales | 60h | 2023-04-21 15:00 | 2023-05-02 19:00 | 63 | 48d |  | Analista de calidad | 60h | 1,308 |
| 76 | 1.3.4.1.3 | Pruebas de módulo | 60h | 2023-04-21 15:00 | 2023-05-02 19:00 | 63 | 48d |  | Analista de calidad | 60h | 1,308 |
| 77 | 1.3.4.1.4 | Pruebas de caja negra y caja blanca | 60h | 2023-04-21 15:00 | 2023-05-02 19:00 | 63 | 48d |  | Analista de calidad | 60h | 1,308 |
| 78 | 1.3.4.2 | **Plan de pruebas de integración** | 7.5d | 2023-04-21 15:00 | 2023-05-02 19:00 | 63 | 48d |  |  |  |  |
| 79 | 1.3.4.2.1 | Pruebas de integración incremental | 60h | 2023-04-21 15:00 | 2023-05-02 19:00 |  | 48d |  |  |  |  |
| 80 | 1.3.4.2.2 | Pruebas de integración Big Bang | 60h | 2023-04-21 15:00 | 2023-05-02 19:00 | 63 | 48d |  |  |  |  |
| 81 | 1.3.4.3 | **User Acceptance Testing** | 7.5d | 2023-04-21 15:00 | 2023-05-02 19:00 | 63 | 48d |  |  |  |  |
| 82 | 1.3.4.3.1 | Definir plan de UAT | 60h | 2023-04-21 15:00 | 2023-05-02 19:00 |  | 48d |  |  |  |  |
| 83 | 1.3.4.3.2 | Ejecutar pruebas de usuario final | 60h | 2023-04-21 15:00 | 2023-05-02 19:00 | 63 | 48d |  |  |  |  |

| ID | WBS | Task | Duration | Start | Finish | Predecessors | Total slack |
| --- | --- | --- | --- | --- | --- | --- | --- |
| 84 | 1.3.5 | **Despliegue** | 5d | 2023-04-21 15:00 | 2023-04-28 13:00 | 63 | 50.5d |
| 85 | 1.3.5.1 | Subida de la base de datos al servidor de base de datos | 40h | 2023-04-21 15:00 | 2023-04-28 13:00 |  | 50.5d |
| 86 | 1.3.5.2 | Subida del código fuente al servidor de producción | 40h | 2023-04-21 15:00 | 2023-04-28 13:00 | 63 | 50.5d |
| 87 | 1.3.5.3 | Aprobación del proceso y puesta en marcha | 40h | 2023-04-21 15:00 | 2023-04-28 13:00 | 63 | 50.5d |
| 88 | 1.4 | **Monitoreo y Control** | 22d | 2023-07-10 09:00 | 2023-08-08 19:00 | 52 | 0d |
| 89 | 1.4.1 | **Control de ejecución del proyecto** | 12d | 2023-07-10 09:00 | 2023-07-25 19:00 |  | 0d |
| 90 | 1.4.1.1 | Controlar el alcance | 32h | 2023-07-10 09:00 | 2023-07-13 19:00 |  | 0d |
| 91 | 1.4.1.2 | Controlar el cumplimiento del cronograma | 32h | 2023-07-14 09:00 | 2023-07-19 19:00 | 90 | 0d |
| 92 | 1.4.1.3 | Control los costos y utilización de recursos | 16h | 2023-07-20 09:00 | 2023-07-21 19:00 | 91 | 0d |
| 93 | 1.4.1.4 | Controlar la calidad | 8h | 2023-07-24 09:00 | 2023-07-24 19:00 | 92 | 0d |
| 94 | 1.4.1.5 | Monitorear los riesgos | 8h | 2023-07-25 09:00 | 2023-07-25 19:00 | 93 | 0d |
| 95 | 1.4.2 | **Control de cambios integrados del proyecto** | 4d | 2023-07-26 09:00 | 2023-07-31 19:00 | 89 | 0d |
| 96 | 1.4.2.1 | Revisar requerimientos de cambios | 8h | 2023-07-26 09:00 | 2023-07-26 19:00 |  | 0d |
| 97 | 1.4.2.2 | Clasificar y registrar el cambio | 8h | 2023-07-27 09:00 | 2023-07-27 19:00 | 96 | 0d |
| 98 | 1.4.2.3 | Evaluar y aprobar el cambio | 8h | 2023-07-28 09:00 | 2023-07-28 19:00 | 97 | 0d |
| 99 | 1.4.2.4 | Gestionar proyecto de acuerdo al cambio | 8h | 2023-07-31 09:00 | 2023-07-31 19:00 | 98 | 0d |
| 100 | 1.4.3 | **Monitoreo del desempeño de Asimov** | 6d | 2023-08-01 09:00 | 2023-08-08 19:00 | 95 | 0d |
| 101 | 1.4.3.1 | Identificar KPI del software | 40h | 2023-08-01 09:00 | 2023-08-07 19:00 |  | 0d |
| 102 | 1.4.3.2 | Documentar informe de seguimiento | 8h | 2023-08-08 09:00 | 2023-08-08 19:00 | 101 | 0d |
| 103 | 1.5 | **Cierre** | 8d | 2023-08-09 09:00 | 2023-08-18 19:00 | 88 | 0d |
| 104 | 1.5.1 | **Acta de cierre del proyecto** | 5.5d | 2023-08-09 09:00 | 2023-08-16 13:00 |  | 0d |
| 105 | 1.5.1.1 | Evaluación de cumplimiento de objetivos del proyecto | 4h | 2023-08-09 09:00 | 2023-08-09 13:00 |  | 0d |
| 106 | 1.5.1.2 | Entrega del producto de software | 16h | 2023-08-09 15:00 | 2023-08-11 13:00 | 105 | 0d |
| 107 | 1.5.1.3 | Cierre de contratos | 16h | 2023-08-11 15:00 | 2023-08-15 13:00 | 106 | 0d |
| 108 | 1.5.1.4 | Aprobación de acta de cierre | 8h | 2023-08-15 15:00 | 2023-08-16 13:00 | 107 | 0d |
| 109 | 1.5.2 | Desmantelamiento de recursos | 16h | 2023-08-16 15:00 | 2023-08-18 13:00 | 104 | 0d |
| 110 | 1.5.3 | Celebración del proyecto | 4h | 2023-08-18 15:00 | 2023-08-18 19:00 | 109 | 0d |
